# Plantilla_DGH_Valladolid_Madrid

Schedule from MS Project, 2018-01-02 to 2018-10-08.
Gestión de Proyectos
DGH

## Calendars

- DGH: Mon-Fri 09:00-13:00, 15:00-19:00; Sat-Sun off.

## Resources

| Resource | Group |
| --- | --- |
| Albert Sentis | DGH Ingeniería |
| Alberto Amieva Suarez | DGH Ingeniería |
| Alberto Carrera Rua | DGH Ingeniería |
| Alberto Gomez Aguado | DGH Ingeniería |
| Alberto Hevia Abalde | DGH Ingeniería |
| Albino Acevedo Lopez | DGH Mantenimiento |
| Alejandro Rodriguez Cancelas | DGH Ingeniería |
| Alexandre Martin-Mestres Sanchez | DGH Ingeniería |
| Alvaro Garcia Hermoso | DGH Ingeniería |
| Angel Rivero Miguel | DGH Servicios Centrales |
| Antonio Mayo Bandera | DGH Mantenimiento |
| Arantxa Lasarte | DGH Servicios Centrales |
| Beatriz Martín Rodriguez | DGH Servicios Centrales |
| Bernardino Lopez Carro | DGH Ingeniería |
| Carlos Conceiçao | DGH Servicios Centrales |
| Carlos David Perez Mateo | DGH Servicios Centrales |
| Carlos de la Parra Martín | DGH Ingeniería |
| Carlos de Santiago Gay | DGH Ingeniería |
| Carlos Diez Izarra | DGH Ingeniería |
| Carlos Serrano Zamora | DGH Ingeniería |
| Carmen Gamarra | DGH Servicios Centrales |
| Celeste Prieto Bermejo | DGH Ingeniería |
| Celine Girardon | DGH Ingeniería |
| Christian Cal Peralba | DGH Ingeniería |
| Cipriano González Trullen | DGH Mantenimiento |
| Cristina Velasco Lobato | DGH Servicios Centrales |
| Cristino Marin Santos | DGH Mantenimiento |
| Daniel Gutierrez Arce | DGH Ingeniería |
| David Espejo Duran | DGH Ingenieria |
| David Gomez Fernandez | DGH Mantenimiento |
| Diego Del Rio Barcia | DGH Ingeniería |
| Diego Garcia Gomez | DGH Ingeniería |
| Diego Jose Posada Iglesias | DGH Ingeniería |
| Eduardo Navares Lucas | DGH Servicios Centrales |
| Eduardo Sanz Gomez | DGH Ingeniería |
| Emilio Lago Perez | DGH Ingeniería |
| Enrique Gil Illescas | DGH Servicios Centrales |
| Esther Gomez Ferradas | DGH Ingeniería |
| Fabian Figueira Romero | DGH Ingeniería |
| Fernando Avellón Calvo | DGH Ingeniería |
| Fernando Prieto Vicente | DGH Ingeniería |
| Francisco Javier Martinez San Jose | DGH Servicios Centrales |
| Francisco Jose Campoo Sanchez | DGH Ingeniería |
| Francisco Ruiz Carrasco | DGH Ingeniería |
| Gabriel Ajo San Jose | DGH Servicios Centrales |
| German Orozco Reguero | DGH Servicios Centrales |
| Gilberto Buron Gil | DGH Ingeniería |
| Guillermo Martin Dominguez | DGH Servicios Centrales |
| Hugo Tejedor Pajares | DGH Ingeniería |
| Ignacio Pinilla Lopez | DGH Mantenimiento |
| Javier Alvarez Lasarte | DGH Ingeniería |
| Javier Basarte Arroyo | DGH Ingeniería |
| Javier Martinez Fernandez | DGH Ingeniería |
| Jean Paul Yague Sanchez | DGH Ingenieria |
| Jesus Couso | DGH Ingeniería |
| Jesús García Diaz | DGH Mantenimiento |
| Jesus Manzanares Romero | DGH Ingenieria |
| Joaquin Martinez García | DGH Mantenimiento |
| Jordi Gol Canals | DGH Mantenimiento |
| Jordi Gutierrez | DGH Ingeniería |
| Jorge Junco | DGH Mantenimiento |
| Jose Antonio Gonzalez Vila | DGH Ingeniería |
| Jose Antonio Molina Parrilla | DGH Ingeniería |
| Jose Manuel San Martin Castellanos | DGH Ingeniería |
| Jose Ramón Martínez Otero | DGH Ingeniería |
| Juan Miguel Castillo Rios | DGH Ingeniería |
| Julio Vicente Barreiro | DGH Mantenimiento |
| Lidia Martinez Barrios | DGH Servicios Centrales |
| Manuel Carou Peon | DGH Mantenimiento |
| Marcos Heras Gonzalez | DGH Mantenimiento |
| María José Alfonso | DGH Servicios Centrales |
| Marta Fernandez Reboreda | DGH Ingeniería |
| Martin Daza Prieto | DGH Ingeniería |
| Miguel Angel Pablos Gutierrez | DGH Servicios Centrales |
| Miguel Medina | DGH Ingeniería |
| Moises Rodriguez | DGH Mantenimiento |
| Nieves Toribio de la Vega | DGH Servicios Centrales |
| Noelia Garcia Valladares | DGH Ingeniería |
| Oliver Cabrejas | DGH Ingeniería |
| Orlando De la Cruz | DGH Ingeniería |
| Oscar Mendez Martin | DGH Ingeniería |
| Pablo Bocos Rojo | DGH Ingeniería |
| Pablo Gutierrez Lozano | DGH Ingeniería |
| Pablo Martinez Romero | DGH Ingeniería |
| Philippe Nonain | DGH Ingeniería |
| Pilar Sierra Ruiz | DGH Ingeniería |
| Rafael Aguilar Manosalvas | DGH Mantenimiento |
| Raquel Ceballos Palomo | DGH Ingeniería |
| Raquel Valverde Sanz | Mantenimiento |
| Roberto Hernandez Martin | DGH Ingeniería |
| Roberto Sanchez Novoa | DGH Ingeniería |
| Rodrigo Panero Hernandez | DGH Ingeniería |
| Rolan Ramirez Perez | DGH Ingeniería |
| Ruben Merino Marguello | DGH Ingeniería |
| Salvador Garcia Gordo | DGH Ingeniería |
| Santiago Salado Gonzalo | DGH Servicios Centrales |
| Saul Hernandez | DGH Servicios Centrales |
| Saul Vega Martínez | DGH Ingeniería |
| Sergio Martinez San Jose | DGH Ingeniería |
| Sergio Velasco Lerena | DGH Servicios Centrales |
| Susana Tome Crespo | DGH Servicios Centrales |
| Sylvain Goguet | DGH Ingeniería |
| Victor Agea Ferrero | Departamento |
| Victor Tejedor Alonso | DGH Ingeniería |
| Violeta Cubero Sacristan | DGH Ingenieria |
| UG ROBÓTICO VALLADOLID | DGH Ingeniería |
| UG ESTUDIOS MECÁNICOS | DGH Ingeniería |
| UG ESTUDIOS ELÉCTRICOS | DGH Ingeniería |
| UG ELÉCTRICO VALLADOLID | DGH Ingeniería |
| UG ELÉCTRICO TALLER | DGH Ingeniería |
| UG AUTOMATISTA VALLADOLID | DGH Ingeniería |
| UG MECÁNICO TALLER | DGH Ingeniería |
| UG JEFE DE PROYECTO | DGH Ingeniería |
| UG INFORMÁTICA | DGH Ingeniería |
| UG ROBCAD | DGH Ingeniería |
| UG MECÁNICO VALLADOLID | DGH Ingeniería |
| Ainara Sainz Pacheco | DGH Servicios Centrales |
| Alejandro González Izard | DGH Ingeniería |
| Alfredo Hernández Quero | DGH Ingeniería |
| Álvaro Galindo de Santos | DGH Ingeniería |
| Arturo Ruiz Pascual | DGH Ingeniería |
| Bruno Rodriguez Vieitez | DGH Ingeniería |
| Cristian Pérez Barbo | DGH Ingeniería |
| Daniel Canalejo Sanchez | DGH Mantenimiento |
| Daniel Diez Silvan | DGH Servicios Centrales |
| David Cuñado Garcia | DGH Mantenimiento |
| Diego de la Fuente Lozano | DGH Servicios Centrales |
| Diego Gonzalez Sancho | RRHH |
| Eloy Goberna Vicente | DGH Ingeniería |
| Enrique González Montenegro | DGH Ingeniería |
| Enrique Lorenzo | DGH Ingeniería |
| Ernesto Fernández García | DGH Ingeniería Valladolid |
| Felix De La Vara Oñoro | DGH Mantenimiento |
| Fernando Gómez Martín | DGH Ingeniería |
| Fernando González Rodríguez | DGH Ingeniería |
| Francisco Javier Chamorro Pérez | DGH Ingeniería |
| Francisco Javier Penas Varela | DGH Mantenimiento |
| Francisco Manuel Ramos Jordán | DGH Ingeniería |
| Francisco Menéndez Solís |  |
| Gloria Rey | DGH Servicios Centrales |
| Irene Barón Renzi | DGH Ingeniería |
| Ismael Aguero Urias | DGH Ingeniería |
| Ivan Pereira Pereira | DGH Ingeniería |
| Ivan Rodriguez Dominguez | DGH Mantenimiento |
| Javier López Cruzado | DGH Ingeniería |
| Jerome Bernard Rott | DGH Ingeniería |
| Jose María Gonzalez Rodríguez | DGH Servicios Centrales |
| Juan Antonio Barco Moreno | DGH Mantenimiento |
| Juan Carlos Diez Quintanilla | DGH Ingeniería |
| Juan Carlos Duque Santodomingo | DGH Ingeniería de Procesos |
| Juan Carlos Otero Fontán | DGH Ingeniería |
| Laura García Nieto | DGH Servicios Centrales |
| Manuel Manzanedo | DGH Ingeniería |
| Marc Burés LLadó | DGH Ingeniería |
| María José Bravo de la Cruz | DGH Servicios Centrales |
| Mario Curiel Nieto | DGH Ingeniería |
| Miguel Fernandez Suarez | DGH Ingeniería |
| Nuria Toribio Sacristán | DGH Ingeniería |
| Raúl Calvo Andrés | DGH Ingeniería |
| Raúl López Cantalapiedra | DGH Ingeniería |
| Raul Pérez Galindo | DGH Ingeniería |
| Raúl Zapico Minguela | DGH Ingeniería |
| Rebeca Gómez Montero | DGH Ingeniería |
| Roberto Lechuga Domínguez | DGH Ingeniería |
| Víctor Medina Serrano | DGH Ingeniería |
| Xulio Laxe Reboreda | DGH Ingeniería |

## Schedule

| ID | WBS | Task | Type | Duration | Start | Finish | Predecessors | Total slack | Free slack | Constraint | Resources | Work |
| --- | --- | --- | --- | --- | --- | --- | --- | --- | --- | --- | --- | --- |
| 1 | 1 | **HITOS CLIENTE** |  | 0d | 2018-01-02 | 2018-01-02 |  | 0d |  |  |  |  |
| 2 | 1.1 | HITO PO: Pedido de Compras | milestone, manual | 0d | 2018-01-02 | 2018-01-02 |  |  |  |  |  |  |
| 3 | 1.2 | HITO ATFE: Acuerdo Técnico Fin Estudios | milestone, manual | 0d | 2018-01-02 | 2018-01-02 |  |  |  |  |  |  |
| 4 | 1.3 | HITO ATPL: Validación Puesta en Marcha en DGH | milestone, manual | 0d | 2018-01-02 | 2018-01-02 |  |  |  |  |  |  |
| 5 | 1.4 | HITO RCP: Validación a la Entrega en RENAULT | milestone, manual | 0d | 2018-01-02 | 2018-01-02 |  |  |  |  |  |  |
| 6 | 1.5 | HITO ATFMR: Acuerdo Técnico Fin Puesta en Marcha | milestone, manual | 0d | 2018-01-02 | 2018-01-02 |  |  |  |  |  |  |
| 7 | 1.6 | HITO ATR: Acuerdo Técnico Recepción de la Instalación | milestone, manual | 0d | 2018-01-02 | 2018-01-02 |  |  |  |  |  |  |
| 8 | 2 | **GESTIÓN DEL PROYECTO** |  | 200d | 2018-01-02 | 2018-10-08 |  | 0d |  |  |  | 1600h |
| 9 | 2.1 | HITO: LANZAMIENTO DEL PROYECTO | milestone, manual | 0d | 2018-01-02 | 2018-01-02 |  |  |  | start no earlier than 2018-01-02 |  |  |
| 10 | 2.2 | Pilotaje del Proyecto |  | 200d | 2018-01-02 | 2018-10-08 | 9SS | 0d |  |  | UG JEFE DE PROYECTO | 1600h |
| 11 | 2.3 | ENTREGABLE: FICHA DE PREVENCIÓN | milestone | 0d | 2018-01-08 | 2018-01-08 | 9SS+5d | 90d | 5d |  |  |  |
| 12 | 2.4 | ENTREGABLE: ANÁLISIS FUNCIONAL | milestone | 0d | 2018-01-15 | 2018-01-15 | 9SS+10d | 85d | 0d |  |  |  |
| 13 | 2.5 | ENTREGABLE: ANÁLISIS DE RIESGOS | milestone | 0d | 2018-01-29 | 2018-01-29 | 12FS+10d | 85d | 0d |  |  |  |
| 14 | 2.6 | ENTREGABLE: ORGANIGRAMA | milestone | 0d | 2018-01-29 | 2018-01-29 | 12FS+10d | 85d | 0d |  |  |  |
| 15 | 3 | **ESTUDIOS** |  | 30d | 2018-01-16 | 2018-02-26 |  | 24d |  |  |  | 520h |
| 16 | 3.1 | **ESTUDIOS MECÁNICOS** |  | 25d | 2018-01-16 | 2018-02-19 |  | 85d | 0d |  |  | 200h |
| 17 | 3.1.1 | Realización de Estudios Mecánicos |  | 25d | 2018-01-16 | 2018-02-19 | 12, 11 | 85d | 0d |  | UG ESTUDIOS MECÁNICOS | 200h |
| 18 | 3.1.2 | ENTREGABLE: DISEÑO 3D PROVISIONAL | milestone | 0d | 2018-01-29 | 2018-01-29 | 17SS+10d | 85d | 0d |  |  |  |
| 19 | 3.1.3 | ENTREGABLE: IMPLANTACIÓN PROVISIONAL | milestone | 0d | 2018-01-29 | 2018-01-29 | 18 | 85d | 0d |  |  |  |
| 20 | 3.1.4 | ENTREGABLE: PEDIDOS MATERIAL PLAZO CRÍTICO | milestone | 0d | 2018-01-29 | 2018-01-29 | 18 | 85d | 0d |  |  |  |
| 21 | 3.1.5 | ENTREGABLE: VIÑETAS | milestone | 0d | 2018-01-29 | 2018-01-29 | 19 | 85d | 0d |  |  |  |
| 22 | 3.1.6 | ENTREGABLE: DISEÑO 3D DEFINITIVO | milestone | 0d | 2018-02-12 | 2018-02-12 | 17SS+20d | 85d | 0d |  |  |  |
| 23 | 3.1.7 | ENTREGABLE: LAYOUT, PLANOS CONJUNTO, LISTAS, etc. | milestone | 0d | 2018-02-12 | 2018-02-12 | 22 | 165d |  |  |  |  |
| 24 | 3.1.8 | ENTREGABLE: PLANOS 2D | milestone | 0d | 2018-02-19 | 2018-02-19 | 22FS+5d | 85d | 0d |  |  |  |
| 25 | 3.1.9 | ENTREGABLE: DOCUMENTACIÓN | milestone | 0d | 2018-02-19 | 2018-02-19 | 24 | 160d |  |  |  |  |
| 26 | 3.1.10 | ENTREGABLE: PEDIDOS MATERIAL | milestone | 0d | 2018-02-19 | 2018-02-19 | 24 | 85d | 0d |  |  |  |

| ID | WBS | Task | Type | Duration | Start | Finish | Predecessors | Total slack | Free slack | Resources | Work |
| --- | --- | --- | --- | --- | --- | --- | --- | --- | --- | --- | --- |
| 27 | 3.2 | **ESTUDIOS ROBCAD** |  | 10d | 2018-01-30 | 2018-02-12 |  | 165d | 5d |  | 80h |
| 28 | 3.2.1 | Realización de Estudios ROBCAD |  | 10d | 2018-01-30 | 2018-02-12 | 19 | 165d | 0d | UG ROBCAD | 80h |
| 29 | 3.2.2 | ENTREGABLE: SIMULACIÓN | milestone | 0d | 2018-02-12 | 2018-02-12 | 28 | 165d |  |  |  |
| 30 | 3.3 | **ESTUDIOS ELÉCTRICOS** |  | 15d | 2018-01-30 | 2018-02-19 |  | 14d | 0d |  | 120h |
| 31 | 3.3.1 | Realización de Estudios Eléctricos |  | 15d | 2018-01-30 | 2018-02-19 | 14, 21, 13, 12, 11 | 85d | 0d | UG ESTUDIOS ELÉCTRICOS | 120h |
| 32 | 3.3.2 | ENTREGABLE: ESQUEMAS PROVISIONALES | milestone | 0d | 2018-02-12 | 2018-02-12 | 31SS+10d | 85d | 0d |  |  |
| 33 | 3.3.3 | ENTREGABLE: PEDIDOS MATERIAL PLAZO CRÍTICO | milestone | 0d | 2018-02-12 | 2018-02-12 | 32 | 85d | 0d |  |  |
| 34 | 3.3.4 | ENTREGABLE: PERFORMANCE LEVEL | milestone | 0d | 2018-02-12 | 2018-02-12 | 32 | 165d |  |  |  |
| 35 | 3.3.5 | ENTREGABLE: ESQUEMAS CONTRUCTIVOS | milestone | 0d | 2018-02-19 | 2018-02-19 | 31SS+15d | 90d | 0d |  |  |
| 36 | 3.3.6 | ENTREGABLE: PEDIDOS MATERIAL | milestone | 0d | 2018-02-19 | 2018-02-19 | 35 | 90d | 0d |  |  |
| 37 | 3.3.7 | ENTREGABLE: DOCUMENTACIÓN | milestone, manual | 0d | 2018-02-19 | 2018-02-19 | 35 |  |  |  |  |
| 38 | 3.4 | **ESTUDIOS AUTOMATISMOS** |  | 5d | 2018-01-30 | 2018-02-05 |  | 170d | 10d |  | 40h |
| 39 | 3.4.1 | Realización de Estudios PLC |  | 5d | 2018-01-30 | 2018-02-05 | 13, 12, 11 | 170d | 0d | UG AUTOMATISTA VALLADOLID | 40h |
| 40 | 3.4.2 | ENTREGABLE: ESTRUCTURA DE PROGRAMA | milestone | 0d | 2018-02-05 | 2018-02-05 | 39 | 170d |  |  |  |
| 41 | 3.4.3 | ENTREGABLE: DESCRIPTIVO AUTOMATISMOS | milestone | 0d | 2018-02-05 | 2018-02-05 | 39 | 170d |  |  |  |
| 42 | 3.4.4 | ENTREGABLE: CUADERNO DE RECETAS | milestone | 0d | 2018-02-05 | 2018-02-05 | 39 | 170d |  |  |  |
| 43 | 3.4.5 | ENTREGABLE: MANUAL OPERARIO | milestone | 0d | 2018-02-05 | 2018-02-05 | 39 | 170d |  |  |  |
| 44 | 3.4.6 | ENTREGABLE: OTRA DOCUMENTACIÓN | milestone | 0d | 2018-02-05 | 2018-02-05 | 39 | 170d |  |  |  |
| 45 | 3.5 | **ESTUDIOS ROBÓTICA** |  | 5d | 2018-01-30 | 2018-02-05 |  | 170d | 10d |  | 40h |
| 46 | 3.5.1 | Realización de Estudios Robótica |  | 5d | 2018-01-30 | 2018-02-05 | 13, 12, 11 | 170d | 0d | UG ROBÓTICO VALLADOLID | 40h |
| 47 | 3.5.2 | ENTREGABLE: ESTRUCTURA DE PROGRAMA | milestone | 0d | 2018-02-05 | 2018-02-05 | 46 | 170d |  |  |  |
| 48 | 3.5.3 | ENTREGABLE: MARGARITAS | milestone | 0d | 2018-02-05 | 2018-02-05 | 46 | 170d |  |  |  |
| 49 | 3.5.4 | ENTREGABLE: MANUAL OPERARIO | milestone | 0d | 2018-02-05 | 2018-02-05 | 46 | 170d |  |  |  |
| 50 | 3.5.5 | ENTREGABLE: OTRA DOCUMENTACIÓN | milestone | 0d | 2018-02-05 | 2018-02-05 | 46 | 170d |  |  |  |

| ID | WBS | Task | Type | Duration | Start | Finish | Predecessors | Total slack | Free slack | Resources | Work | Proveedor |
| --- | --- | --- | --- | --- | --- | --- | --- | --- | --- | --- | --- | --- |
| 51 | 3.6 | **ESTUDIOS INFORMÁTICA / VISIÓN** |  | 5d | 2018-01-30 | 2018-02-05 |  | 170d | 10d |  | 40h |  |
| 52 | 3.6.1 | Realización de Estudios Informática / Visión |  | 5d | 2018-01-30 | 2018-02-05 | 13, 12, 11 | 170d | 0d | UG INFORMÁTICA | 40h |  |
| 53 | 3.6.2 | ENTREGABLE: ESTUDIOS INFORMÁTICA | milestone | 0d | 2018-02-05 | 2018-02-05 | 52 | 170d |  |  |  |  |
| 54 | 3.7 | ENTREGABLE: DOCUMENTACIÓN ESTUDIOS | milestone | 0d | 2018-02-19 | 2018-02-19 | 30, 38, 45, 51, 16, 27 | 160d | 0d |  |  |  |
| 55 | 3.8 | HITO ATFE: Acuerdo Técnico Fin Estudios | milestone | 0d | 2018-02-26 | 2018-02-26 | 54FS+5d | 160d |  |  |  |  |
| 56 | 4 | **FABRICACIÓN, MONTAJE Y PUESTA EN MARCHA EN DGH** |  | 140d | 2018-01-30 | 2018-08-13 |  | 40d |  |  | 1168h |  |
| 57 | 4.1 | **COMPRAS** |  | 45d | 2018-01-30 | 2018-04-02 |  | 85d |  |  |  |  |
| 58 | 4.1.1 | COMPRAS MECANIZADOS |  | 25d | 2018-02-20 | 2018-03-26 | 26 | 85d | 0d |  |  | Proveedor |
| 59 | 4.1.2 | COMPRAS COMERCIALES MECÁNICOS PLAZO CRÍTICO |  | 40d | 2018-01-30 | 2018-03-26 | 20 | 85d | 0d |  |  | Proveedor |
| 60 | 4.1.3 | COMPRAS COMERCIALES ELÉCTRICOS PLAZO CRÍTICO |  | 30d | 2018-02-13 | 2018-03-26 | 33 | 85d | 0d |  |  | Proveedor |
| 61 | 4.1.4 | COMPRAS COMERCIALES MECÁNICOS |  | 20d | 2018-02-20 | 2018-03-19 | 26 | 90d | 5d |  |  | Proveedor |
| 62 | 4.1.5 | COMPRAS COMERCIALES ELÉCTRICOS |  | 20d | 2018-02-20 | 2018-03-19 | 36 | 90d | 5d |  |  | Proveedor |
| 63 | 4.1.6 | BUFFER ENTREGA MATERIALES |  | 5d | 2018-03-27 | 2018-04-02 | 58, 60, 62, 61, 59 | 85d | 0d |  |  |  |
| 64 | 4.2 | **MONTAJE EN DGH** |  | 40d | 2018-04-03 | 2018-05-28 |  | 85d |  |  | 360h |  |
| 65 | 4.2.1 | **MONTAJE CONJUNTOS EN DGH** |  | 25d | 2018-04-03 | 2018-05-07 |  | 85d |  |  | 240h |  |
| 66 | 4.2.1.1 | Montaje mecánico conjuntos en DGH |  | 15d | 2018-04-03 | 2018-04-23 | 63 | 85d | 0d | UG MECÁNICO TALLER | 120h |  |
| 67 | 4.2.1.2 | Montaje eléctrico conjuntos en DGH |  | 15d | 2018-04-17 | 2018-05-07 | 66FS-5d | 85d | 0d | UG ELÉCTRICO TALLER | 120h |  |
| 68 | 4.2.1.3 | HITO: CONJUNTOS LISTOS PARA IMPLEMENTACIÓN | milestone | 0d | 2018-05-07 | 2018-05-07 | 66, 67 | 85d | 0d |  |  |  |
| 69 | 4.2.2 | **MONTAJE EN BLANCO EN DGH** |  | 15d | 2018-05-08 | 2018-05-28 |  | 85d |  |  | 120h |  |
| 70 | 4.2.2.1 | Montaje mecánico en blanco en DGH |  | 5d | 2018-05-08 | 2018-05-14 | 68 | 85d | 0d | UG MECÁNICO VALLADOLID | 40h |  |
| 71 | 4.2.2.2 | Montaje eléctrico en blanco en DGH |  | 10d | 2018-05-15 | 2018-05-28 | 70 | 85d | 0d | UG ELÉCTRICO VALLADOLID | 80h |  |
| 72 | 4.2.2.3 | HITO: CONJUNTOS LISTOS PARA PRUEBAS | milestone | 0d | 2018-05-28 | 2018-05-28 | 70, 71 | 85d | 0d |  |  |  |
| 73 | 4.3 | **PROGRAMACIÓN** |  | 15d | 2018-05-08 | 2018-05-29 |  | 95d |  |  | 360h |  |
| 74 | 4.3.1 | Programación PLC |  | 15d | 2018-05-08 | 2018-05-29 | 77SF | 95d |  | UG AUTOMATISTA VALLADOLID | 120h |  |
| 75 | 4.3.2 | Programación ROBOT |  | 15d | 2018-05-08 | 2018-05-29 | 77SF | 95d |  | UG ROBÓTICO VALLADOLID | 120h |  |
| 76 | 4.3.3 | Programación Informática / Visión |  | 15d | 2018-05-08 | 2018-05-29 | 77SF | 95d |  | UG INFORMÁTICA | 120h |  |

| ID | WBS | Task | Type | Duration | Start | Finish | Predecessors | Total slack | Free slack | Resources | Work | Proveedor |
| --- | --- | --- | --- | --- | --- | --- | --- | --- | --- | --- | --- | --- |
| 77 | 4.4 | **PUESTA EN MARCHA EN DGH** |  | 10d | 2018-05-29 | 2018-06-11 |  | 85d | 0d |  | 400h |  |
| 78 | 4.4.1 | Asistencia a PEM Eléctrico en DGH |  | 10d | 2018-05-29 | 2018-06-11 | 72 | 85d |  | UG ELÉCTRICO VALLADOLID | 80h |  |
| 79 | 4.4.2 | Asistencia a PEM Mecánico en DGH |  | 10d | 2018-05-29 | 2018-06-11 | 72 | 85d |  | UG MECÁNICO VALLADOLID | 80h |  |
| 80 | 4.4.3 | Puesta en marcha PLC en DGH |  | 10d | 2018-05-29 | 2018-06-11 | 72 | 85d | 0d | UG AUTOMATISTA VALLADOLID | 80h |  |
| 81 | 4.4.4 | Puesta en marcha ROBOT en DGH |  | 10d | 2018-05-29 | 2018-06-11 | 72 | 85d | 0d | UG ROBÓTICO VALLADOLID | 80h |  |
| 82 | 4.4.5 | Puesta en marcha Informática en DGH |  | 10d | 2018-05-29 | 2018-06-11 | 72 | 85d | 0d | UG INFORMÁTICA | 80h |  |
| 83 | 4.4.6 | HITO ATPL: Validación Puesta en Marcha en DGH | milestone | 0d | 2018-06-11 | 2018-06-11 | 80, 81, 82 | 85d |  |  |  |  |
| 84 | 4.5 | **DESMONTAJE, CARGA Y TRANSPORTE** |  | 4d | 2018-08-08 | 2018-08-13 |  | 3d |  |  | 48h |  |
| 85 | 4.5.1 | HITO: FECHA AUTORIZACIÓN DESCARGA | milestone, manual | 0d | 2018-08-13 | 2018-08-13 |  |  |  |  |  |  |
| 86 | 4.5.2 | Desmontaje eléctrico en DGH |  | 2d | 2018-08-08 | 2018-08-09 | 85FS-3d | 23d | 0d | UG ELÉCTRICO VALLADOLID | 16h |  |
| 87 | 4.5.3 | Desmontaje mecánico en DGH |  | 2d | 2018-08-09 | 2018-08-10 | 86SS+1d | 23d | 0d | UG MECÁNICO VALLADOLID | 16h |  |
| 88 | 4.5.4 | Carga de camiones en DGH |  | 1d | 2018-08-13 | 2018-08-13 | 86, 87 | 23d | 0d | UG MECÁNICO VALLADOLID | 8h |  |
| 89 | 4.5.5 | Transporte | milestone | 0d | 2018-08-13 | 2018-08-13 | 88SS | 23d | 0d |  |  | Proveedor |
| 90 | 4.5.6 | Descarga en CLIENTE |  | 1d | 2018-08-13 | 2018-08-13 | 89, 85SS | 23d | 0d | UG MECÁNICO VALLADOLID | 8h |  |
| 91 | 5 | **MONTAJE, PUESTA EN MARCHA Y ASISTENCIA en CLIENTE** |  | 36d | 2018-08-14 | 2018-10-02 |  | 4d |  |  | 744h |  |
| 92 | 5.1 | **MONTAJE EN CLIENTE** |  | 7d | 2018-08-14 | 2018-08-22 |  | 23d |  |  | 144h |  |
| 93 | 5.1.1 | Montaje mecánico en CLIENTE |  | 7d | 2018-08-14 | 2018-08-22 | 90, 88 | 23d | 0d | UG MECÁNICO VALLADOLID | 56h |  |
| 94 | 5.1.2 | Montaje eléctrico en CLIENTE |  | 5d | 2018-08-16 | 2018-08-22 | 93SS+2d | 23d | 0d | UG ELÉCTRICO VALLADOLID | 40h |  |
| 95 | 5.1.3 | Pruebas de señales PLC en CLIENTE |  | 2d | 2018-08-21 | 2018-08-22 | 94FS-2d | 23d | 0d | UG AUTOMATISTA VALLADOLID | 16h |  |
| 96 | 5.1.4 | Pruebas de señales ROBOT EN CLIENTE |  | 2d | 2018-08-21 | 2018-08-22 | 94FS-2d | 23d | 0d | UG ROBÓTICO VALLADOLID | 16h |  |
| 97 | 5.1.5 | Pruebas de señales Informática EN CLIENTE |  | 2d | 2018-08-21 | 2018-08-22 | 94FS-2d | 23d | 0d | UG INFORMÁTICA | 16h |  |
| 98 | 5.1.6 | HITO RCP: Validación Entrega en RENAULT | milestone | 0d | 2018-08-22 | 2018-08-22 | 93, 94, 95, 96, 97 | 23d | 0d |  |  |  |
| 99 | 5.2 | **PUESTA EN MARCHA EN CLIENTE** |  | 10d | 2018-08-23 | 2018-09-05 |  | 23d |  |  | 400h |  |
| 100 | 5.2.1 | Asistencia a PEM Eléctrico en CLIENTE |  | 10d | 2018-08-23 | 2018-09-05 | 98 | 23d | 0d | UG ELÉCTRICO VALLADOLID | 80h |  |
| 101 | 5.2.2 | Asistencia a PEM Mecánico en CLIENTE |  | 10d | 2018-08-23 | 2018-09-05 | 98 | 23d | 0d | UG MECÁNICO VALLADOLID | 80h |  |
| 102 | 5.2.3 | Puesta en marcha PLC en CLIENTE |  | 10d | 2018-08-23 | 2018-09-05 | 98 | 23d | 0d | UG AUTOMATISTA VALLADOLID | 80h |  |
| 103 | 5.2.4 | Puesta en marcha ROBOT en CLIENTE |  | 10d | 2018-08-23 | 2018-09-05 | 98 | 23d | 0d | UG ROBÓTICO VALLADOLID | 80h |  |
| 104 | 5.2.5 | Puesta en marcha Informática en CLIENTE |  | 10d | 2018-08-23 | 2018-09-05 | 98 | 23d | 0d | UG INFORMÁTICA | 80h |  |
| 105 | 5.2.6 | HITO ATFMR: Acuerdo Técnico Fin Puesta en Marcha | milestone | 0d | 2018-09-05 | 2018-09-05 | 100, 101, 102, 103, 104 | 23d |  |  |  |  |

| ID | WBS | Task | Type | Duration | Start | Finish | Predecessors | Total slack | Free slack | Resources | Work |
| --- | --- | --- | --- | --- | --- | --- | --- | --- | --- | --- | --- |
| 106 | 5.3 | **ASISTENCIA A LA PRODUCCIÓN EN CLIENTE** |  | 5d | 2018-09-26 | 2018-10-02 |  | 0d |  |  | 200h |
| 107 | 5.3.1 | HITO: FECHA INICIO DE LA PRODUCCIÓN EN CLIENTE | milestone, manual | 0d | 2018-09-26 | 2018-09-26 |  |  |  |  |  |
| 108 | 5.3.2 | Asistencia Mecánico en CLIENTE |  | 5d | 2018-09-26 | 2018-10-02 | 107SS | 4d | 0d | UG MECÁNICO VALLADOLID | 40h |
| 109 | 5.3.3 | Asistencia Eléctrico en CLIENTE |  | 5d | 2018-09-26 | 2018-10-02 | 107SS | 4d | 0d | UG ELÉCTRICO VALLADOLID | 40h |
| 110 | 5.3.4 | Asistencia PLC en CLIENTE |  | 5d | 2018-09-26 | 2018-10-02 | 107SS | 4d | 0d | UG AUTOMATISTA VALLADOLID | 40h |
| 111 | 5.3.5 | Asistencia ROBOT en CLIENTE |  | 5d | 2018-09-26 | 2018-10-02 | 107SS | 4d | 0d | UG ROBÓTICO VALLADOLID | 40h |
| 112 | 5.3.6 | Asistencia Informática en CLIENTE |  | 5d | 2018-09-26 | 2018-10-02 | 107SS | 4d | 0d | UG INFORMÁTICA | 40h |
| 113 | 5.3.7 | HITO ATR: Acuerdo Técnico Recepción de Instalación | milestone | 0d | 2018-10-02 | 2018-10-02 | 108, 109, 110, 111, 112 | 4d |  |  |  |
